# Programación Oficial Tarea 2 MTC - Grupo 7

Schedule from MS Project, 2026-01-09 to 2027-01-21.
Constructora Grupo 7

## Calendars

- Estándar Chile 2026: Mon-Fri 08:00-12:00, 13:00-18:00; Sat-Sun off. Exceptions (off unless hours are given): 2026-04-03 to 2026-04-04, 2026-05-01, 2026-05-21, 2026-06-29, 2026-07-16, 2026-08-15, 2026-09-18 to 2026-09-19, 2026-10-12, 2026-10-31 to 2026-11-01, 2026-12-08, 2026-12-25.

## Schedule

| ID | WBS | Task | Type | Duration | Start | Finish | Predecessors | Total slack | Free slack |
| --- | --- | --- | --- | --- | --- | --- | --- | --- | --- |
| 1 | 1 | **PROYECTO BODEGAS BSL QUILICURA — GRUPO 7** |  | 291.88d? | 2026-01-09 | 2027-01-21 |  | 0d |  |
| 2 | 1.1 | **GESTIÓN Y ADMINISTRACIÓN PREVIA DE FAENA** |  | 9.88d? | 2026-03-02 | 2026-03-12 |  | 0d |  |
| 3 | 1.1.1 | 0.1 Instalación de faenas provisorias | milestone | 0d? | 2026-03-02 | 2026-03-02 |  | 0d |  |
| 4 | 1.1.2 | 0.2 Trazado, replanteo y niveles generales |  | 4.88d? | 2026-03-06 | 2026-03-12 | 3FS+5d | 0d |  |
| 5 | 1.2 | **MOVIMIENTO DE TIERRAS, FUNDACIONES Y VIALIDAD** |  | 191d? | 2026-01-30 | 2026-10-02 |  | 6.62d |  |
| 6 | 1.2.1 | **Movimiento de Tierras Masivo y Excavaciones** |  | 21.88d? | 2026-02-09 | 2026-03-06 |  | 0d |  |
| 7 | 1.2.1.1 | 1.1 Excavación en TCN Caminos |  | 2.88d? | 2026-03-03 | 2026-03-06 | 4SF | 197.25d | 0d |
| 8 | 1.2.1.2 | 1.2 Excavación en TCN Bodegas |  | 21.88d? | 2026-02-09 | 2026-03-06 | 4SF | 0d |  |
| 9 | 1.2.2 | **Mejoramiento de Sello y Plataformas** |  | 72.25d? | 2026-01-30 | 2026-05-04 |  | 33.5d |  |
| 10 | 1.2.2.1 | 1.3 Mejoramiento Fundaciones integral natural (1,5 m) |  | 21.88d? | 2026-03-12 | 2026-04-10 | 8FS+5d | 0d |  |
| 11 | 1.2.2.2 | 1.4 Mejoramiento Fundaciones integral natural (0,5 m) |  | 8.88d? | 2026-04-21 | 2026-05-04 | 10FS+8d | 162.25d | 0d |
| 12 | 1.2.2.3 | 1.10 Preparación de la Subrasante Bodegas |  | 14.88d? | 2026-04-01 | 2026-04-21 | 11SF | 162.25d | 0d |
| 13 | 1.2.2.4 | 1.9 Terraplén bajo radier bodegas |  | 5.88d? | 2026-03-25 | 2026-04-01 | 12SF | 162.25d | 32.88d |
| 14 | 1.2.2.5 | 1.11 Preparación de la Subrasante Caminos |  | 7.88d? | 2026-02-20 | 2026-03-03 | 7SF | 197.25d | 0d |
| 15 | 1.2.2.6 | 1.8 Terraplén caminos y areas de servicio |  | 7.88d? | 2026-02-11 | 2026-02-20 | 14SF | 197.25d | 0d |
| 16 | 1.2.2.7 | 1.12 Base Granular Caminos |  | 9.88d? | 2026-01-30 | 2026-02-11 | 15SF | 197.25d | 0d |
| 17 | 1.2.3 | **Obras de Hormigón Armado en Fundaciones** |  | 112.5d? | 2026-02-26 | 2026-07-23 |  | 0d |  |
| 18 | 1.2.3.1 | 1.17 Hormigón G-04 Emplantillado Fundaciones |  | 2.88d? | 2026-04-16 | 2026-04-21 | 10FS+5d | 0d |  |
| 19 | 1.2.3.2 | 1.21 Enfierradura Fundaciones Zapatas |  | 38.88d? | 2026-02-26 | 2026-04-16 | 18SF | 0d |  |
| 20 | 1.2.3.3 | 1.16 Hormigón G-25 Fundaciones Zapatas |  | 15.88d? | 2026-04-27 | 2026-05-18 | 19FS+8d | 0d |  |
| 21 | 1.2.3.4 | 1.22 Enfierradura Vigas de Fundación |  | 13.88d? | 2026-05-26 | 2026-06-11 | 20FS+5d | 118.88d | 0d |
| 22 | 1.2.3.5 | 1.18 Hormigón G-25 Vigas de Fundación |  | 5.88d? | 2026-06-17 | 2026-06-24 | 21FS+4d | 118.88d | 0d |
| 23 | 1.2.3.6 | 1.23 Enfierradura Pedestales |  | 29.88d? | 2026-05-27 | 2026-07-03 | 20FS+6d | 0d |  |
| 24 | 1.2.3.7 | 1.19 Hormigón G-25 Pedestales Galpones y Oficinas |  | 5.88d? | 2026-07-15 | 2026-07-23 | 23FS+8d | 0d |  |
| 25 | 1.2.3.8 | 1.24 Enfierradura Muros Galpones y Oficinas |  | 32.88d? | 2026-05-06 | 2026-06-17 | 22SF | 118.88d | 0d |
| 26 | 1.2.3.9 | 1.20 Hormigón G-25 Muros Galpones y Oficinas |  | 17.88d? | 2026-06-26 | 2026-07-22 | 25FS+8d | 118.88d | 0d |

| ID | WBS | Task | Duration | Start | Finish | Predecessors | Total slack | Free slack |
| --- | --- | --- | --- | --- | --- | --- | --- | --- |
| 27 | 1.2.4 | **Rellenos Estructurales Confinados y Base Interior** | 48.5d? | 2026-04-17 | 2026-06-19 |  | 129.38d |  |
| 28 | 1.2.4.1 | 1.6 Relleno Estructural bajo 6" | 11.88d? | 2026-06-05 | 2026-06-19 | 22SF+3d | 129.38d | 0d |
| 29 | 1.2.4.2 | 1.5 Relleno Estructural bajo 2" | 8.88d? | 2026-05-26 | 2026-06-05 | 28SF | 129.38d | 0d |
| 30 | 1.2.4.3 | 1.7 Relleno Estructural bajo 2" Bodegas, Oficinas, VF | 13.88d? | 2026-05-07 | 2026-05-26 | 29SF | 129.38d | 0d |
| 31 | 1.2.4.4 | 1.13 Base Granular Bodegas | 13.88d? | 2026-04-17 | 2026-05-07 | 30SF, 13SF | 129.38d |  |
| 32 | 1.2.5 | **Pavimentos y Radieres de Hormigón** | 136.25d? | 2026-04-09 | 2026-10-02 |  | 84.88d |  |
| 33 | 1.2.5.1 | 1.14 Hormigón G-25 radier (malla acma C-92) | 20.88d? | 2026-09-07 | 2026-10-02 | 31SF, 41FS+35d | 0d |  |
| 34 | 1.2.5.2 | 1.15 Hormigón G-35 calles | 23.88d? | 2026-04-09 | 2026-05-11 | 16SF, 38FS+10d | 197.25d | 189.25d |
| 35 | 1.2.6 | **Obras Viales Exteriores y Soleras** | 31.88d? | 2026-02-16 | 2026-03-26 |  | 197.25d |  |
| 36 | 1.2.6.1 | 1.25 Demolición de Aceras | 1.88d? | 2026-02-19 | 2026-02-20 | 14SF | 229d | 0d |
| 37 | 1.2.6.2 | 1.26 Remoción de Soleras | 2.88d? | 2026-02-16 | 2026-02-19 | 36SF | 229d | 31.75d |
| 38 | 1.2.6.3 | 1.27 Solera Tipo A | 31.88d? | 2026-02-16 | 2026-03-26 | 37SF, 16FS+3d | 197.25d | 0d |
| 39 | 1.3 | **ESTRUCTURAS, REVESTIMIENTOS, CUBIERTAS Y TERMINACIONES** | 291.88d? | 2026-01-09 | 2027-01-21 |  | 0d |  |
| 40 | 1.3.1 | **Estructura Metálica y Envolvente Térmica** | 110.75d? | 2026-05-04 | 2026-09-23 |  | 0d |  |
| 41 | 1.3.1.1 | 2.1 Estructura Metalica Montado y Pintado | 62.88d? | 2026-05-04 | 2026-07-24 | 24SF+7d | 0d |  |
| 42 | 1.3.1.2 | 2.2 Aislación | 22.88d? | 2026-08-25 | 2026-09-23 | 41FS+25d | 92.88d | 83.88d |
| 43 | 1.3.2 | **Divisiones y Recintos Interiores** | 100.75d? | 2026-07-22 | 2026-11-27 |  | 0d |  |
| 44 | 1.3.2.1 | 2.3 Divisiones interiores bodegas | 43.88d? | 2026-07-22 | 2026-09-15 | 33SF+7d | 0d |  |
| 45 | 1.3.2.2 | 2.4 Oficinas | 46.88d? | 2026-09-29 | 2026-11-27 | 44FS+10d, 26SF | 0d |  |
| 46 | 1.3.3 | **Drenajes Pluviales y Accesos Industriales** | 248.25d? | 2026-03-05 | 2027-01-21 |  | 0d |  |
| 47 | 1.3.3.1 | 2.5 Drenes (CuboDren) | 23.88d? | 2026-03-05 | 2026-04-06 | 14FS+2d | 224.38d | 216.38d |
| 48 | 1.3.3.2 | 2.6 Portones Bodegas | 22.88d? | 2026-04-02 | 2026-05-04 | 41SF | 203.62d | 194.62d |
| 49 | 1.3.3.3 | 2.7 Puertas exteriores | 15.88d? | 2026-04-13 | 2026-05-04 | 41SF | 203.62d | 187.62d |
| 50 | 1.3.3.4 | 2.8 Muros cortinas, ventanas y puertas vidriadas | 31.88d? | 2026-12-11 | 2027-01-21 | 45FS+10d | 0d |  |

| ID | WBS | Task | Duration | Start | Finish | Predecessors | Total slack | Free slack |
| --- | --- | --- | --- | --- | --- | --- | --- | --- |
| 51 | 1.3.4 | **Edificaciones de Servicio y Cierros Perimetrales** | 134.12d? | 2026-01-09 | 2026-07-02 |  | 157.75d |  |
| 52 | 1.3.4.1 | 2.9 Porteria Acogida, bicicletero y barrera | 25.88d? | 2026-01-09 | 2026-02-11 | 15SF | 266d | 260d |
| 53 | 1.3.4.2 | 2.10 Sala electrica | 20.88d? | 2026-06-04 | 2026-07-02 | 26SF+3d | 157.75d | 146.75d |
| 54 | 1.3.4.3 | 2.11 Sala agua potable | 15.88d? | 2026-06-11 | 2026-07-02 | 26SF+3d | 157.75d | 141.75d |
| 55 | 1.3.4.4 | 2.12 Sala residuos | 14.88d? | 2026-01-23 | 2026-02-11 | 15SF | 266d | 249d |
| 56 | 1.3.4.5 | 2.13 Cierre Perimetral Acmaford | 12.88d? | 2026-02-05 | 2026-02-20 | 14SF | 258.12d | 239.12d |
| 57 | 1.3.4.6 | 2.14 Cierre perimetral Bulldog | 20.88d? | 2026-02-03 | 2026-03-02 | 3SF | 252.38d | 241.38d |
| 58 | 1.4 | **CIERRE, ASEO Y RECEPCIÓN DE OBRAS** | 14.75d? | 2026-11-20 | 2026-12-11 |  | 31.88d |  |
| 59 | 1.4.1 | 3.1 Aseo y limpieza final | 9.88d? | 2026-11-27 | 2026-12-11 | 34SF, 42SF, 44SF, 45SF, 47SF, 48SF, 49SF, 50SF, 52SF, 53SF, 54SF, 55SF, 56SF, 57SF | 31.88d | 0d |
| 60 | 1.4.2 | 3.2 Recepción provisoria y entrega | 4.88d? | 2026-11-20 | 2026-11-27 | 59SF | 41.75d |  |
